# y03s01-softeng-lab-03-v02

How a schedule from MS Project changed from version to version. A marks actual dates.

## Version 1 (saved 2018-09-30, file y03s01-softeng-lab-04-v00-clean.mpp)

Note of the change: Y03S01: Software Engineering: Lab 04: add solution working draft

| ID | WBS | Task | Duration | Start | Finish | Predecessors | Total float |
| --- | --- | --- | --- | --- | --- | --- | --- |
| 1 |  | Початок робіт | 0d | 2018-09-25 | 2018-09-25 |  | 0d |
| 2 | 2 | **Формування вимог** | 5d | 2018-09-25 | 2018-10-01 | 1 | 0d |
| 3 |  | Обстеження об'єкта та обгрунтування необхідності створення Системи | 1d | 2018-09-25 | 2018-09-25 |  | 0d |
| 4 |  | Формування вимог користувача до Системи | 3d | 2018-09-26 | 2018-09-28 | 3 | 0d |
| 5 |  | Оформлення звіту про виконану роботу і заявки на розробку Системи | 1d | 2018-10-01 | 2018-10-01 | 4 | 0d |
| 6 | 3 | **Розробка концепції системи** | 7d | 2018-10-02 | 2018-10-10 | 2 | 0d |
| 7 |  | Дослідження об'єкта | 1d | 2018-10-02 | 2018-10-02 |  | 0d |
| 8 |  | Проведення необхідних дослідницьких робіт | 1d | 2018-10-03 | 2018-10-03 | 7 | 0d |
| 9 |  | Розробка варіантів концепції Системи, що задовольняє вимоги користувача | 4d | 2018-10-04 | 2018-10-09 | 8 | 0d |
| 10 |  | Оформлення звіту про виконану роботу | 1d | 2018-10-10 | 2018-10-10 | 9 | 0d |
| 11 | 4 | **Технічне завдання** | 7d | 2018-10-11 | 2018-10-19 | 10, 6 | 0d |
| 12 |  | Розробка технічного завдання на створення системи | 7d | 2018-10-11 | 2018-10-19 |  | 0d |
| 13 | 5 | **Ескізний проект** | 6d | 2018-10-22 | 2018-10-29 | 11 | 0d |
| 14 |  | Розробка попередніх проектних рішень по системі та її складовим | 3d | 2018-10-22 | 2018-10-24 | 12 | 0d |
| 15 |  | Розробка документації на Систему та її складові | 3d | 2018-10-25 | 2018-10-29 | 14 | 0d |
| 16 | 6 | **Технічний проект** | 8d | 2018-10-30 | 2018-11-08 | 13 | 0d |
| 17 |  | Розробка проектних рішень по Системі та її складовим | 5d | 2018-10-30 | 2018-11-05 | 15 | 0d |
| 18 |  | Розробка документації на Систему та її складові | 3d | 2018-11-06 | 2018-11-08 | 17 | 0d |
| 19 |  | Розробка та оформлення документації на поставку виробів для комплектації Системи | 3d | 2018-11-06 | 2018-11-08 | 17 | 0d |
| 20 |  | Розробка завдань на проектування у суміжних частинах проекту об'єкту автоматизації | 3d | 2018-11-06 | 2018-11-08 | 17 | 0d |
| 21 | 7 | **Робоча документація** | 13d | 2018-11-09 | 2018-11-27 | 16 | 0d |
| 22 |  | Розробка робочої документації на Систему та її складові | 6d | 2018-11-09 | 2018-11-16 | 18 | 0d |
| 23 |  | Розробка чи адаптація програм | 7d | 2018-11-19 | 2018-11-27 | 22 | 0d |
| 24 | 8 | **Введення в експлуатацію** | 16d | 2018-11-28 | 2018-12-19 | 21 | 0d |
| 25 |  | Підготовка об'єкту автоматизації до вводу Системи в експлуатацію | 3d | 2018-11-28 | 2018-11-30 | 23 | 13d |
| 26 |  | Підготовка персоналу | 5d | 2018-11-28 | 2018-12-04 | 23 | 11d |
| 27 |  | Комплектація Системи необхідними виробами | 2d | 2018-11-28 | 2018-11-29 | 23 | 0d |
| 28 |  | Будівельно-монтажні роботи | 3d | 2018-11-30 | 2018-12-04 | 27 | 0d |
| 29 |  | Пусконалагоджувальні роботи | 2d | 2018-12-05 | 2018-12-06 | 28 | 0d |
| 30 |  | Проведення попередніх випробувань | 3d | 2018-12-07 | 2018-12-11 | 29 | 0d |
| 31 |  | Проведення дослідної експлуатації | 3d | 2018-12-12 | 2018-12-14 | 30 | 0d |
| 32 |  | Проведення прийомних дослідів | 3d | 2018-12-17 | 2018-12-19 | 31 | 0d |
| 33 |  | Завершення робіт | 0d | 2018-12-19 | 2018-12-19 | 32, 24 | 0d |

## Version 2 (saved 2018-10-01, file y03s01-softeng-lab-04-v02.mpp)

Note of the change: Y03S01: Software Engineering: Lab 04: update solution file

Last finish 2018-12-19 → 2018-11-21 (-28d). Complete tasks 0 → 3.

Changed:

| ID | Task | Start | Finish | Duration | Complete | Total float | Other |
| --- | --- | --- | --- | --- | --- | --- | --- |
| 2 | **Формування вимог** | 2018-09-25 A | 2018-10-01 → 2018-09-27 A (-4d) | 5d → 2.5d | 0% → 100% | 0d → none |  |
| 3 | Обстеження об'єкта та обгрунтування необхідності створення Системи | 2018-09-25 A | 2018-09-25 A | 1d → 0.5d | 0% → 100% | 0d → none | resources none → Руководитель проекта; Системный аналитик |
| 4 | Формування вимог користувача до Системи | 2018-09-26 → 2018-09-25 A (-1d) | 2018-09-28 → 2018-09-26 A (-2d) | 3d → 1.5d | 0% → 100% | 0d → none | resources none → Руководитель проекта; Системный аналитик |
| 5 | Оформлення звіту про виконану роботу і заявки на розробку Системи | 2018-10-01 → 2018-09-27 A (-4d) | 2018-10-01 → 2018-09-27 A (-4d) | 1d → 0.5d | 0% → 100% | 0d → none | resources none → Руководитель проекта; Системный аналитик |
| 6 | **Розробка концепції системи** | 2018-10-02 → 2018-09-27 (-5d) | 2018-10-10 → 2018-10-02 (-8d) | 7d → 3.5d |  |  |  |
| 7 | Дослідження об'єкта | 2018-10-02 → 2018-09-27 (-5d) | 2018-10-02 → 2018-09-27 (-5d) | 1d → 0.5d |  |  | resources none → Руководитель проекта; Системный аналитик |
| 8 | Проведення необхідних дослідницьких робіт | 2018-10-03 → 2018-09-28 (-5d) | 2018-10-03 → 2018-09-28 (-5d) | 1d → 0.5d |  |  | resources none → Руководитель проекта; Системный аналитик |
| 9 | Розробка варіантів концепції Системи, що задовольняє вимоги користувача | 2018-10-04 → 2018-09-28 (-6d) | 2018-10-09 → 2018-10-02 (-7d) | 4d → 2d |  |  | resources none → Руководитель проекта; Системный аналитик |
| 10 | Оформлення звіту про виконану роботу | 2018-10-10 → 2018-10-02 (-8d) | 2018-10-10 → 2018-10-02 (-8d) | 1d → 0.5d |  |  | resources none → Руководитель проекта; Системный аналитик |
| 11 | **Технічне завдання** | 2018-10-11 → 2018-10-03 (-8d) | 2018-10-19 → 2018-10-08 (-11d) | 7d → 3.5d |  |  |  |
| 12 | Розробка технічного завдання на створення системи | 2018-10-11 → 2018-10-03 (-8d) | 2018-10-19 → 2018-10-08 (-11d) | 7d → 3.5d |  |  | resources none → Руководитель проекта; Системный аналитик; Главный программист |
| 13 | **Ескізний проект** | 2018-10-22 → 2018-10-08 (-14d) | 2018-10-29 → 2018-10-10 (-19d) | 6d → 2d |  |  |  |
| 14 | Розробка попередніх проектних рішень по системі та її складовим | 2018-10-22 → 2018-10-08 (-14d) | 2018-10-24 → 2018-10-09 (-15d) | 3d → 1d |  |  | resources none → Руководитель проекта; Главный программист; Программист |
| 15 | Розробка документації на Систему та її складові | 2018-10-25 → 2018-10-09 (-16d) | 2018-10-29 → 2018-10-10 (-19d) | 3d → 1d |  |  | resources none → Руководитель проекта; Главный программист; Программист |
| 16 | **Технічний проект** | 2018-10-30 → 2018-10-10 (-20d) | 2018-11-08 → 2018-10-17 (-22d) | 8d → 5.5d |  |  |  |
| 17 | Розробка проектних рішень по Системі та її складовим | 2018-10-30 → 2018-10-10 (-20d) | 2018-11-05 → 2018-10-12 (-24d) | 5d → 2.5d |  |  | resources none → Руководитель проекта; Системный аналитик; Главный программист |
| 18 | Розробка документації на Систему та її складові | 2018-11-06 → 2018-10-15 (-22d) | 2018-11-08 → 2018-10-17 (-22d) |  |  |  | resources none → Руководитель проекта; Программист |
| 19 | Розробка та оформлення документації на поставку виробів для комплектації Системи | 2018-11-06 → 2018-10-15 (-22d) | 2018-11-08 → 2018-10-16 (-23d) | 3d → 1.5d |  | 0d → 1.5d | resources none → Руководитель проекта; Программист; Системный администратор |
| 20 | Розробка завдань на проектування у суміжних частинах проекту об'єкту автоматизації | 2018-11-06 → 2018-10-15 (-22d) | 2018-11-08 → 2018-10-17 (-22d) |  |  |  | resources none → Руководитель проекта; Главный программист |
| 21 | **Робоча документація** | 2018-11-09 → 2018-10-18 (-22d) | 2018-11-27 → 2018-11-05 (-22d) |  |  |  |  |
| 22 | Розробка робочої документації на Систему та її складові | 2018-11-09 → 2018-10-18 (-22d) | 2018-11-16 → 2018-10-25 (-22d) |  |  |  | resources none → Руководитель проекта; Программист |
| 23 | Розробка чи адаптація програм | 2018-11-19 → 2018-10-26 (-24d) | 2018-11-27 → 2018-11-05 (-22d) |  |  |  | resources none → Руководитель проекта; Программист; Главный программист |
| 24 | **Введення в експлуатацію** | 2018-11-28 → 2018-11-06 (-22d) | 2018-12-19 → 2018-11-21 (-28d) | 16d → 12d |  |  |  |
| 25 | Підготовка об'єкту автоматизації до вводу Системи в експлуатацію | 2018-11-28 → 2018-11-06 (-22d) | 2018-11-30 → 2018-11-07 (-23d) | 3d → 1.5d |  | 13d → 10.5d | resources none → Руководитель проекта; Системный аналитик; Системный администратор |
| 26 | Підготовка персоналу | 2018-11-28 → 2018-11-06 (-22d) | 2018-12-04 → 2018-11-12 (-22d) |  |  | 11d → 7d | resources none → Руководитель проекта; Инструктор |
| 27 | Комплектація Системи необхідними виробами | 2018-11-28 → 2018-11-06 (-22d) | 2018-11-29 → 2018-11-07 (-22d) |  |  |  | resources none → Руководитель проекта; Системный администратор |
| 28 | Будівельно-монтажні роботи | 2018-11-30 → 2018-11-08 (-22d) | 2018-12-04 → 2018-11-12 (-22d) |  |  |  | resources none → Руководитель проекта; Системный администратор |
| 29 | Пусконалагоджувальні роботи | 2018-12-05 → 2018-11-13 (-22d) | 2018-12-06 → 2018-11-13 (-23d) | 2d → 1d |  |  | resources none → Руководитель проекта; Системный администратор; Главный системный администратор |
| 30 | Проведення попередніх випробувань | 2018-12-07 → 2018-11-14 (-23d) | 2018-12-11 → 2018-11-16 (-25d) |  |  |  | resources none → Руководитель проекта; Системный аналитик; Системный администратор |
| 31 | Проведення дослідної експлуатації | 2018-12-12 → 2018-11-19 (-23d) | 2018-12-14 → 2018-11-20 (-24d) | 3d → 1.5d |  |  | resources none → Руководитель проекта; Главный системный администратор; Системный аналитик |
| 32 | Проведення прийомних дослідів | 2018-12-17 → 2018-11-20 (-27d) | 2018-12-19 → 2018-11-21 (-28d) | 3d → 1.5d |  |  | resources none → Руководитель проекта; Главный системный администратор; Системный администратор |
| 33 | Завершення робіт | 2018-12-19 → 2018-11-21 (-28d) | 2018-12-19 → 2018-11-21 (-28d) |  |  |  |  |
